# 免费用水版本 8k Nov

How a schedule from a web Gantt chart changed from version to version. A marks actual dates.

## Version 1 (saved 2024-11-21)

| ID | WBS | Task | Duration | Start | Finish | Predecessors | Complete |
| --- | --- | --- | --- | --- | --- | --- | --- |
| 2 |  | 客户需求冻结 | 5d | 2024-11-01 | 2024-11-07 |  | 100% |
| 3 | 2 | **软件定版、开发与测试** | 13d | 2024-11-08 | 2024-11-26 |  | 57% |
| 4 |  | 软件开发 | 10d | 2024-11-08 | 2024-11-21 |  | 80% |
| 5 |  | willfar内部测试 | 1d | 2024-11-22 | 2024-11-22 | 4 |  |
| 6 |  | inzalo测试 | 3d | 2024-11-22 | 2024-11-26 | 4 |  |
| 7 |  | 产线生产 | 10d | 2024-11-15 | 2024-11-28 |  | 40% |
| 8 |  | 物流发货 | 29d | 2024-12-06 | 2025-01-15 |  |  |
| 9 |  | 南非做STS认证（软件功能修改时需要重新认证） | 10d | 2024-11-27 | 2024-12-10 | 3 |  |
| 10 |  | 国内做CE-RED通信认证（涉及通信变化时需要重新认证） | 1d | 2024-11-27 | 2024-11-27 | 3 |  |
| 11 |  | 南非换ICASA | 1d | 2024-11-28 | 2024-11-28 | 10 |  |
| 12 |  | 南非换NRCS | 1d | 2024-11-29 | 2024-11-29 | 11 |  |

## Version 2 (saved 2024-11-21)

Last finish 2025-01-15 → 2025-02-07 (+23d).

Added:

| ID | Task | Duration | Start | Finish | Predecessors |
| --- | --- | --- | --- | --- | --- |
| 2 | **11月 8k** | 56d | 2024-11-01 | 2025-01-17 |  |
| 12 | **12月 8k** | 57d | 2024-11-21 | 2025-02-07 |  |
| 13 | 准备技术附件，准备投产 | 2d | 2024-11-21 | 2024-11-22 |  |
| 14 | 产线生产 | 10d | 2024-11-25 | 2024-12-06 | 13 |
| 15 | 物流发货 | 45d | 2024-12-09 | 2025-02-07 | 14 |

Removed: 10 国内做CE-RED通信认证（涉及通信变化时需要重新认证）; 11 南非换ICASA

Changed:

| ID | Task | Start | Finish | Duration | Predecessors |
| --- | --- | --- | --- | --- | --- |
| 8 | 产线生产 | 2024-11-15 → 2024-11-01 (-14d) | 2024-11-28 → 2024-11-29 (+1d) | 10d → 21d |  |
| 9 | 物流发货 | 2024-12-06 → 2024-12-02 (-4d) |  | 29d → 33d | none → 8 |
| 10 | 南非做STS认证（软件功能修改时需要重新认证） |  | 2024-12-10 → 2025-01-03 (+24d) | 10d → 28d |  |
| 11 | 南非换NRCS | 2024-11-29 → 2025-01-06 (+38d) | 2024-11-29 → 2025-01-17 (+49d) | 1d → 10d | 南非换ICASA → 10 |

## Version 3 (saved 2024-11-22)

Last finish 2025-02-07 → 2025-02-14 (+7d).

Added:

| ID | Task | Duration | Start | Finish | Predecessors |
| --- | --- | --- | --- | --- | --- |
| 9 | 1st batch 物流发货 | 29d | 2024-12-06 | 2025-01-15 |  |
| 15 | 2nd batch 物流发货 | 45d | 2024-12-16 | 2025-02-14 | 14 |

Removed: 9 物流发货; 15 物流发货

Changed:

| ID | Task | Start | Finish | Duration | Complete | Predecessors |
| --- | --- | --- | --- | --- | --- | --- |
| 2 | **11月 8k** |  | 2025-01-17 → 2025-01-15 (-2d) | 56d → 54d | 19% → 24% |  |
| 4 | **软件定版、开发与测试** |  |  |  | 57% → 56% |  |
| 6 | willfar内部测试 | 2024-11-22 → 2024-11-12 (-10d) |  | 1d → 9d | 0% → 80% | 5 → none |
| 7 | inzalo测试 | 2024-11-22 → 2024-11-15 (-7d) |  | 3d → 8d |  | 5 → none |
| 10 | 南非做STS认证（软件功能修改时需要重新认证） |  | 2025-01-03 → 2024-12-13 (-21d) | 28d → 13d |  |  |
| 11 | 南非换NRCS | 2025-01-06 → 2024-12-16 (-21d) | 2025-01-17 → 2025-01-15 (-2d) | 10d → 23d |  |  |
| 12 | **12月 8k** |  | 2025-02-07 → 2025-02-14 (+7d) | 57d → 62d |  |  |
| 14 | 产线生产 |  | 2024-12-06 → 2024-12-13 (+7d) | 10d → 15d |  |  |
